# FLEXIT_AnalysisStage_MatthewPhyland

Schedule from MS Project, 2020-04-06 to 2020-07-20, costs in $, A marks actual dates.

## Calendars

- Standard: Mon-Fri 08:00-12:00, 13:00-17:00; Sat-Sun off.

## Resources

| Resource | Group | Rate | Notes |
| --- | --- | --- | --- |
| Fred | Analyst 3 | 80 |  |
| John | Analyst 2 | 60 |  |
| Mary | Analyst 1 | 40 |  |
| Peter | Analyst 1 | 40 |  |
| Jenny | Analyst 1 | 40 |  |
| Paul | Tech Analyst 3 | 80 |  |
| Geoff | Tech Analyst 1 | 60 |  |
| Roy | Technician | 25 |  |
| Sue | Programmer | 25 |  |
| James | Programmer | 25 |  |
| Tracy | Programmer | 25 |  |
| Cont. Analyst | Analyst 1 | 80 |  |
| Cont. Prog. | Programmer | 50 |  |
| Computer Workstations |  | 2000 | 10 Workstations @ $2,000.00 each |

## Schedule

| ID | WBS | Task | Duration | Start | Finish | Predecessors | Complete | Remaining | Baseline start | Baseline finish | Baseline duration | Total slack | Free slack | Constraint | Resources | Work | Actual work | Cost | Baseline cost | Actual cost |
| --- | --- | --- | --- | --- | --- | --- | --- | --- | --- | --- | --- | --- | --- | --- | --- | --- | --- | --- | --- | --- |
| 1 | 0 | **FlexIT Initial** | 75.75d | 2020-04-06 A | 2020-07-20 |  | 8% | 69.76d | 2020-04-06 | 2020-07-20 | 75.75d | 0d |  |  |  | 1806h | 125h | 94,520 | 92,920 | 9,500 |
| 2 | 1 | **Planning** | 7.5d | 2020-04-06 A | 2020-04-15 A |  | 100% |  | 2020-04-06 | 2020-04-15 | 7.5d |  |  |  |  | 60h | 60h | 4,800 | 4,800 | 4,800 |
| 3 | 1.1 | Problem Definition | 12h | 2020-04-06 A | 2020-04-07 A |  | 100% |  | 2020-04-06 | 2020-04-07 | 12h |  |  |  | Fred | 12h | 12h | 960 | 960 | 960 |
| 4 | 1.2 | Feasibility Study | 48h | 2020-04-07 A | 2020-04-15 A | 3 | 100% |  | 2020-04-07 | 2020-04-15 | 48h |  |  |  | Fred | 48h | 48h | 3,840 | 3,840 | 3,840 |
| 5 | 2 | **Analysis** | 12.5d | 2020-04-15 A | 2020-05-01 |  | 42% | 7.21d | 2020-04-15 | 2020-05-01 | 12.5d | 0d |  |  |  | 170h | 65h | 11,600 | 10,000 | 4,700 |
| 6 | 2.1 | Technical Analysis | 30h | 2020-04-15 A | 2020-04-21 A | 4 | 100% |  | 2020-04-15 | 2020-04-16 | 10h |  |  |  | Paul | 30h | 30h | 2,400 | 800 | 2,400 |
| 7 | 2.2 | System Analysis | 100h | 2020-04-15 A | 2020-05-01 | 4 | 25% | 75h | 2020-04-15 | 2020-05-01 | 100h | 0d |  |  | Fred [40%]; John | 140h | 35h | 9,200 | 9,200 | 2,300 |
| 8 | 3 | **Design** | 22.5d | 2020-05-04 | 2020-06-03 |  |  |  | 2020-05-04 | 2020-06-03 | 22.5d | 0d |  |  |  | 164h |  | 9,840 | 9,840 |  |
| 9 | 3.1 | Technical Design | 20h | 2020-06-01 | 2020-06-03 | 6 |  |  | 2020-06-01 | 2020-06-03 | 20h | 7.25d | 0d | start no earlier than 2020-06-01 | Geoff | 20h |  | 1,200 | 1,200 |  |
| 10 | 3.2 | **Software Design** | 6d | 2020-05-04 | 2020-05-11 |  |  |  | 2020-05-04 | 2020-05-11 | 6d | 0d |  |  |  | 144h |  | 8,640 | 8,640 |  |
| 11 | 3.2.1 | System Design - Enrol. | 48h | 2020-05-04 | 2020-05-11 | 7 |  |  | 2020-05-04 | 2020-05-11 | 48h | 0d |  |  | John | 48h |  | 2,880 | 2,880 |  |
| 12 | 3.2.2 | System Design - Assess. | 48h | 2020-05-04 | 2020-05-11 | 7 |  |  | 2020-05-04 | 2020-05-11 | 48h | 2.5d | 0d |  | Cont. Analyst | 48h |  | 3,840 | 3,840 |  |
| 13 | 3.2.3 | System Design - Report. | 48h | 2020-05-04 | 2020-05-11 | 7 |  |  | 2020-05-04 | 2020-05-11 | 48h | 2.5d | 0d |  | Jenny | 48h |  | 1,920 | 1,920 |  |
| 14 | 4 | **Programming** | 27.5d | 2020-05-12 | 2020-06-18 |  |  |  | 2020-05-12 | 2020-06-18 | 27.5d | 0d |  |  |  | 780h |  | 26,800 | 26,800 |  |
| 15 | 4.1 | System Prog. - Enrol. | 220h | 2020-05-12 | 2020-06-18 | 11 |  |  | 2020-05-12 | 2020-06-18 | 220h | 0d |  |  | Jenny [19%]; Sue; James; Cont. Prog. | 300h |  | 8,600 | 8,600 |  |
| 16 | 4.2 | System Prog. - Assess. | 200h | 2020-05-12 | 2020-06-15 | 12 |  |  | 2020-05-12 | 2020-06-15 | 200h | 2.5d |  |  | Jenny [20%]; Cont. Prog. | 240h |  | 11,600 | 11,600 |  |
| 17 | 4.3 | System Prog. - Report. | 200h | 2020-05-12 | 2020-06-15 | 13 |  |  | 2020-05-12 | 2020-06-15 | 200h | 2.5d |  |  | James; Jenny [20%] | 240h |  | 6,600 | 6,600 |  |
| 18 | 5 | **Implementation** | 12.25d | 2020-06-03 | 2020-06-19 |  |  |  | 2020-06-03 | 2020-06-19 | 12.25d | 0d |  |  |  | 40h |  | 21,000 | 21,000 |  |
| 19 | 5.1 | Hardware implementation | 30h | 2020-06-03 | 2020-06-09 | 9 |  |  | 2020-06-03 | 2020-06-09 | 30h | 7.25d |  |  | Roy; Computer Workstations [1000%] | 30h |  | 20,750 | 20,750 |  |
| 20 | 5.2 | Software implementation | 10h | 2020-06-18 | 2020-06-19 | 19, 15, 16, 17 |  |  | 2020-06-18 | 2020-06-19 | 10h | 0d |  |  | Roy | 10h |  | 250 | 250 |  |
| 21 | 6 | **Testing** | 17d | 2020-06-19 | 2020-07-14 |  |  |  | 2020-06-19 | 2020-07-14 | 17d | 0d |  |  |  | 528h |  | 18,400 | 18,400 |  |
| 22 | 6.1 | Enrol. System Testing | 136h | 2020-06-19 | 2020-07-14 | 20 |  |  | 2020-06-19 | 2020-07-14 | 136h | 0d |  |  | Jenny [30%]; Sue | 176h |  | 5,000 | 5,000 |  |
| 23 | 6.2 | Assess. System Testing | 136h | 2020-06-19 | 2020-07-14 | 20 |  |  | 2020-06-19 | 2020-07-14 | 136h | 0d |  |  | Jenny [30%]; Cont. Prog. | 176h |  | 8,400 | 8,400 |  |
| 24 | 6.3 | Report. System Testing | 136h | 2020-06-19 | 2020-07-14 | 20 |  |  | 2020-06-19 | 2020-07-14 | 136h | 0d |  |  | Jenny [30%]; James | 176h |  | 5,000 | 5,000 |  |
| 25 | 7 | User Training | 32h | 2020-07-14 | 2020-07-20 | 22, 23, 24 |  |  | 2020-07-14 | 2020-07-20 | 32h | 0d |  |  | James; Jenny | 64h |  | 2,080 | 2,080 |  |
