# FLEXIT_Materials_MatthewPhyland

Schedule from MS Project, 2020-04-06 to 2020-07-20, costs in $.

## Calendars

- Standard: Mon-Fri 08:00-12:00, 13:00-17:00; Sat-Sun off.

## Resources

| Resource | Group | Rate | Notes |
| --- | --- | --- | --- |
| Fred | Analyst 3 | 80 |  |
| John | Analyst 2 | 60 |  |
| Mary | Analyst 1 | 40 |  |
| Peter | Analyst 1 | 40 |  |
| Jenny | Analyst 1 | 40 |  |
| Paul | Tech Analyst 3 | 80 |  |
| Geoff | Tech Analyst 1 | 60 |  |
| Roy | Technician | 25 |  |
| Sue | Programmer | 25 |  |
| James | Programmer | 25 |  |
| Tracy | Programmer | 25 |  |
| Cont. Analyst | Analyst 1 | 80 |  |
| Cont. Prog. | Programmer | 50 |  |
| Computer Workstations |  | 2000 | 10 Workstations @ $2,000.00 each |

## Schedule

| ID | WBS | Task | Duration | Start | Finish | Predecessors | Total slack | Free slack | Constraint | Resources | Work | Cost |
| --- | --- | --- | --- | --- | --- | --- | --- | --- | --- | --- | --- | --- |
| 1 | 0 | **FlexIT Initial** | 75.75d | 2020-04-06 | 2020-07-20 |  | 0d |  |  |  | 1786h | 92,920 |
| 2 | 1 | **Planning** | 7.5d | 2020-04-06 | 2020-04-15 |  | 0d |  |  |  | 60h | 4,800 |
| 3 | 1.1 | Problem Definition | 12h | 2020-04-06 | 2020-04-07 |  | 0d |  |  | Fred | 12h | 960 |
| 4 | 1.2 | Feasibility Study | 48h | 2020-04-07 | 2020-04-15 | 3 | 0d |  |  | Fred | 48h | 3,840 |
| 5 | 2 | **Analysis** | 12.5d | 2020-04-15 | 2020-05-01 |  | 0d |  |  |  | 150h | 10,000 |
| 6 | 2.1 | Technical Analysis | 10h | 2020-04-15 | 2020-04-16 | 4 | 38.5d | 31.25d |  | Paul | 10h | 800 |
| 7 | 2.2 | System Analysis | 100h | 2020-04-15 | 2020-05-01 | 4 | 0d |  |  | Fred [40%]; John | 140h | 9,200 |
| 8 | 3 | **Design** | 22.5d | 2020-05-04 | 2020-06-03 |  | 0d |  |  |  | 164h | 9,840 |
| 9 | 3.1 | Technical Design | 20h | 2020-06-01 | 2020-06-03 | 6 | 7.25d | 0d | start no earlier than 2020-06-01 | Geoff | 20h | 1,200 |
| 10 | 3.2 | **Software Design** | 6d | 2020-05-04 | 2020-05-11 |  | 0d |  |  |  | 144h | 8,640 |
| 11 | 3.2.1 | System Design - Enrol. | 48h | 2020-05-04 | 2020-05-11 | 7 | 0d |  |  | John | 48h | 2,880 |
| 12 | 3.2.2 | System Design - Assess. | 48h | 2020-05-04 | 2020-05-11 | 7 | 2.5d | 0d |  | Cont. Analyst | 48h | 3,840 |
| 13 | 3.2.3 | System Design - Report. | 48h | 2020-05-04 | 2020-05-11 | 7 | 2.5d | 0d |  | Jenny | 48h | 1,920 |
| 14 | 4 | **Programming** | 27.5d | 2020-05-12 | 2020-06-18 |  | 0d |  |  |  | 780h | 26,800 |
| 15 | 4.1 | System Prog. - Enrol. | 220h | 2020-05-12 | 2020-06-18 | 11 | 0d |  |  | Jenny [19%]; Sue; James; Cont. Prog. | 300h | 8,600 |
| 16 | 4.2 | System Prog. - Assess. | 200h | 2020-05-12 | 2020-06-15 | 12 | 2.5d |  |  | Jenny [20%]; Cont. Prog. | 240h | 11,600 |
| 17 | 4.3 | System Prog. - Report. | 200h | 2020-05-12 | 2020-06-15 | 13 | 2.5d |  |  | James; Jenny [20%] | 240h | 6,600 |
| 18 | 5 | **Implementation** | 12.25d | 2020-06-03 | 2020-06-19 |  | 0d |  |  |  | 40h | 21,000 |
| 19 | 5.1 | Hardware implementation | 30h | 2020-06-03 | 2020-06-09 | 9 | 7.25d |  |  | Roy; Computer Workstations [1000%] | 30h | 20,750 |
| 20 | 5.2 | Software implementation | 10h | 2020-06-18 | 2020-06-19 | 19, 15, 16, 17 | 0d |  |  | Roy | 10h | 250 |
| 21 | 6 | **Testing** | 17d | 2020-06-19 | 2020-07-14 |  | 0d |  |  |  | 528h | 18,400 |
| 22 | 6.1 | Enrol. System Testing | 136h | 2020-06-19 | 2020-07-14 | 20 | 0d |  |  | Jenny [30%]; Sue | 176h | 5,000 |
| 23 | 6.2 | Assess. System Testing | 136h | 2020-06-19 | 2020-07-14 | 20 | 0d |  |  | Jenny [30%]; Cont. Prog. | 176h | 8,400 |
| 24 | 6.3 | Report. System Testing | 136h | 2020-06-19 | 2020-07-14 | 20 | 0d |  |  | Jenny [30%]; James | 176h | 5,000 |
| 25 | 7 | User Training | 32h | 2020-07-14 | 2020-07-20 | 22, 23, 24 | 0d |  |  | James; Jenny | 64h | 2,080 |
